# detail_construction_iteration

Schedule from MS Project, 1999-05-03 to 1999-05-18.
Rational Software Corporation

## Calendars

- Standard: Mon-Fri 08:00-12:00, 13:00-17:00; Sat-Sun off. Exceptions (off unless hours are given): 1999-05-01 to 1999-05-31 08:00-12:00, 13:00-17:00.

## Resources

| Resource |
| --- |
| Fred |
| System Analyst |
| Architect |
| Designer |
| Design Reviewer |
| Project Manager |
| Project Reviewer |
| Requirements Reviewer |
| Capsule Designer |
| Database Designer |
| Architecture Reviewer |
| System Integrator |
| Implementer |
| Code Reviewer |
| Test Designer |
| Tester |
| Process Engineer |
| Toolsmith |
| Business-Process Analyst |
| User-Interface Designer |
| Technical Writer |
| System Administrator |
| Any Worker |
| Configuration Manager |
| Change Control Manager |
| Tool Specialist |
| Software Architecture |
| Software Architect |
| Integrator |
| Test Analyst |
| Test Manager |

## Schedule

| ID | WBS | Task | Duration | Start | Finish | Predecessors | Total slack | Resources | Work |
| --- | --- | --- | --- | --- | --- | --- | --- | --- | --- |
| 1 | 1 | **Project Management** | 16d | 1999-05-03 | 1999-05-18 |  | 0d |  | 1312h |
| 2 | 1.1 | **Manage Iteration** | 14d | 1999-05-03 | 1999-05-16 |  | 0d |  | 560h |
| 3 | 1.1.1 | Acquire Staff | 14d | 1999-05-03 | 1999-05-16 |  | 0d | Project Manager | 112h |
| 4 | 1.1.2 | Initiate Iteration | 14d | 1999-05-03 | 1999-05-16 |  | 0d | Project Manager | 112h |
| 5 | 1.1.3 | Assess Iteration | 14d | 1999-05-03 | 1999-05-16 |  | 0d | Project Manager | 112h |
| 6 | 1.1.4 | Iteration Evaluation Criteria Review | 14d | 1999-05-03 | 1999-05-16 |  | 0d | Project Reviewer | 112h |
| 7 | 1.1.5 | Iteration Acceptance Review | 14d | 1999-05-03 | 1999-05-16 |  | 0d | Project Reviewer | 112h |
| 8 | 1.2 | **Monitor and Control Project** | 16d | 1999-05-03 | 1999-05-18 | 2SS | 0d |  | 640h |
| 9 | 1.2.1 | Schedule and Assign Work | 16d | 1999-05-03 | 1999-05-18 |  | 0d | Project Manager | 128h |
| 10 | 1.2.2 | Monitor Project Status | 16d | 1999-05-03 | 1999-05-18 |  | 0d | Project Manager | 128h |
| 11 | 1.2.3 | Report Status | 16d | 1999-05-03 | 1999-05-18 |  | 0d | Project Manager | 128h |
| 12 | 1.2.4 | Handle Exceptions and Problems | 16d | 1999-05-03 | 1999-05-18 |  | 0d | Project Manager | 128h |
| 13 | 1.2.5 | Project Review Authority (PRA) Project Review | 16d | 1999-05-03 | 1999-05-18 |  | 0d | Design Reviewer | 128h |
| 14 | 1.3 | **Reevaluate Project Scope and Risk** | 1d | 1999-05-17 | 1999-05-17 | 2 | 0d |  | 16h |
| 15 | 1.3.1 | Identify and Assess Risks | 1d | 1999-05-17 | 1999-05-17 |  | 0d | Project Manager | 8h |
| 16 | 1.3.2 | Develop Business Case | 1d | 1999-05-17 | 1999-05-17 |  | 0d | Project Manager | 8h |
| 17 | 1.4 | **Plan for Next Iteration** | 1d | 1999-05-18 | 1999-05-18 | 14 | 0d |  | 24h |
| 18 | 1.4.1 | Develop Iteration Plan | 1d | 1999-05-18 | 1999-05-18 |  | 0d | Project Manager | 8h |
| 19 | 1.4.2 | Develop Business Case | 1d | 1999-05-18 | 1999-05-18 |  | 0d | Project Manager | 8h |
| 20 | 1.4.3 | Iteration Plan Review | 1d | 1999-05-18 | 1999-05-18 | 30FF | 0d | Project Reviewer | 8h |
| 21 | 1.5 | **Refine Software Development Plan** | 1d | 1999-05-18 | 1999-05-18 | 14 | 0d |  | 72h |
| 22 | 1.5.1 | Develop Measurement Plan | 1d | 1999-05-18 | 1999-05-18 |  | 0d | Project Manager | 8h |
| 23 | 1.5.2 | Develop Risk Management Plan | 1d | 1999-05-18 | 1999-05-18 |  | 0d | Project Manager | 8h |
| 24 | 1.5.3 | Develop Product Acceptance Plan | 1d | 1999-05-18 | 1999-05-18 |  | 0d | Project Manager | 8h |
| 25 | 1.5.4 | Develop Problem Resolution Plan | 1d | 1999-05-18 | 1999-05-18 |  | 0d | Project Manager | 8h |
| 26 | 1.5.5 | Define Project Organization and Staffing | 1d | 1999-05-18 | 1999-05-18 |  | 0d | Project Manager | 8h |
| 27 | 1.5.6 | Define Monitoring & Control Processes | 1d | 1999-05-18 | 1999-05-18 |  | 0d | Project Manager | 8h |
| 28 | 1.5.7 | Plan Phases and Iterations | 1d | 1999-05-18 | 1999-05-18 |  | 0d | Project Manager | 8h |
| 29 | 1.5.8 | Compile Software Development Plan | 1d | 1999-05-18 | 1999-05-18 |  | 0d | Project Manager | 8h |
| 30 | 1.5.9 | Project Planning Review | 1d | 1999-05-18 | 1999-05-18 |  | 0d | Project Reviewer | 8h |

| ID | WBS | Task | Duration | Start | Finish | Predecessors | Total slack | Free slack | Resources | Work |
| --- | --- | --- | --- | --- | --- | --- | --- | --- | --- | --- |
| 31 | 2 | **Requirements** | 13d | 1999-05-03 | 1999-05-15 |  | 3d |  |  | 312h |
| 32 | 2.1 | **Manage Changing Requirements** | 13d | 1999-05-03 | 1999-05-15 |  | 3d |  |  | 312h |
| 33 | 2.1.1 | Structure the Use-Case Model | 13d | 1999-05-03 | 1999-05-15 |  | 3d |  | System Analyst | 104h |
| 34 | 2.1.2 | Manage Dependencies | 13d | 1999-05-03 | 1999-05-15 |  | 3d |  | System Analyst | 104h |
| 35 | 2.1.3 | Review Requirements | 13d | 1999-05-03 | 1999-05-15 |  | 3d |  | Requirements Reviewer | 104h |
| 36 | 3 | **Analysis and Design** | 11d | 1999-05-03 | 1999-05-13 |  | 5d |  |  | 608h |
| 37 | 3.1 | **Design Components** | 5d | 1999-05-03 | 1999-05-07 |  | 11d | 0d |  | 160h |
| 38 | 3.1.1 | Use-Case Design | 5d | 1999-05-03 | 1999-05-07 |  | 11d |  | Designer | 40h |
| 39 | 3.1.2 | Class Design | 5d | 1999-05-03 | 1999-05-07 |  | 11d |  | Designer | 40h |
| 40 | 3.1.3 | Subsystem Design | 5d | 1999-05-03 | 1999-05-07 |  | 11d |  | Designer | 40h |
| 41 | 3.1.4 | Review the Design | 5d | 1999-05-03 | 1999-05-07 |  | 11d |  | Design Reviewer | 40h |
| 42 | 3.2 | **Design the Database** | 5d | 1999-05-03 | 1999-05-07 | 37SS | 11d |  |  | 120h |
| 43 | 3.2.1 | Class Design | 5d | 1999-05-03 | 1999-05-07 |  | 11d |  | Designer | 40h |
| 44 | 3.2.2 | Database Design | 5d | 1999-05-03 | 1999-05-07 |  | 11d |  | Database Designer | 40h |
| 45 | 3.2.3 | Review the Design | 5d | 1999-05-03 | 1999-05-07 |  | 11d |  | Design Reviewer | 40h |
| 46 | 3.3 | **Refine the Architecture** | 11d | 1999-05-03 | 1999-05-13 |  | 5d |  |  | 328h |
| 47 | 3.3.1 | Identify Design Mechanisms | 6d | 1999-05-03 | 1999-05-08 |  | 10d |  | Software Architect | 48h |
| 48 | 3.3.2 | Identify Design Elements | 6d | 1999-05-03 | 1999-05-08 |  | 10d |  | Software Architect | 48h |
| 49 | 3.3.3 | Incorporate Existing Design Elements | 6d | 1999-05-03 | 1999-05-08 |  | 10d |  | Software Architect | 48h |
| 50 | 3.3.4 | Describe the Run-time Architecture | 6d | 1999-05-03 | 1999-05-08 |  | 10d |  | Software Architect | 48h |
| 51 | 3.3.5 | Describe Distribution | 6d | 1999-05-03 | 1999-05-08 |  | 10d |  | Software Architect | 48h |
| 52 | 3.3.6 | Review the Architecture | 11d | 1999-05-03 | 1999-05-13 |  | 5d |  | Architecture Reviewer | 88h |
| 53 | 4 | **Implementation** | 8d | 1999-05-03 | 1999-05-10 |  | 8d |  |  | 296h |
| 54 | 4.1 | **Plan the Integration** | 2d | 1999-05-03 | 1999-05-04 |  | 9d | 0d |  | 16h |
| 55 | 4.1.1 | Plan System Integration | 2d | 1999-05-03 | 1999-05-04 |  | 9d |  | Integrator | 16h |

| ID | WBS | Task | Duration | Start | Finish | Predecessors | Total slack | Free slack | Resources | Work |
| --- | --- | --- | --- | --- | --- | --- | --- | --- | --- | --- |
| 56 | 4.2 | **Implement Components** | 5d | 1999-05-04 | 1999-05-08 | 37SS+1d | 10d | 0d |  | 200h |
| 57 | 4.2.1 | Plan Subsystem Integration | 5d | 1999-05-04 | 1999-05-08 |  | 10d |  | Integrator | 40h |
| 58 | 4.2.2 | Implement Component | 5d | 1999-05-04 | 1999-05-08 |  | 10d |  | Implementer | 40h |
| 59 | 4.2.3 | Fix a Defect | 5d | 1999-05-04 | 1999-05-08 |  | 10d |  | Implementer | 40h |
| 60 | 4.2.4 | Perform Unit Tests | 5d | 1999-05-04 | 1999-05-08 |  | 10d |  | Implementer | 40h |
| 61 | 4.2.5 | Review Code | 5d | 1999-05-04 | 1999-05-08 |  | 10d |  | Code Reviewer | 40h |
| 62 | 4.3 | **Integrate Each Subsystem** | 5d | 1999-05-05 | 1999-05-09 | 56SS+1d, 54 | 9d | 0d |  | 40h |
| 63 | 4.3.1 | Integrate Subsystem | 5d | 1999-05-05 | 1999-05-09 |  | 9d |  | Integrator | 40h |
| 64 | 4.4 | **Integrate the System** | 5d | 1999-05-06 | 1999-05-10 | 62SS+1d | 8d | 0d |  | 40h |
| 65 | 4.4.1 | Integrate System | 5d | 1999-05-06 | 1999-05-10 |  | 8d |  | Integrator | 40h |
| 66 | 5 | **Test** | 14d | 1999-05-03 | 1999-05-16 |  | 2d |  |  | 1892h |
| 67 | 5.1 | **Define Evaluation Mission** | 1.5d | 1999-05-03 | 1999-05-04 |  | 13d | 0d |  | 72h |
| 68 | 5.1.1 | Identify Test Motivators | 1.5d | 1999-05-03 | 1999-05-04 |  | 13d |  | Test Manager | 12h |
| 69 | 5.1.2 | Agree Mission | 1.5d | 1999-05-03 | 1999-05-04 |  | 13d |  | Test Manager | 12h |
| 70 | 5.1.3 | Identify Targets of Test | 1.5d | 1999-05-03 | 1999-05-04 |  | 13d |  | Test Analyst | 12h |
| 71 | 5.1.4 | Define Assessment and Traceability Needs | 1.5d | 1999-05-03 | 1999-05-04 |  | 13d |  | Test Analyst | 12h |
| 72 | 5.1.5 | Identify Test Ideas | 1.5d | 1999-05-03 | 1999-05-04 |  | 13d |  | Test Analyst | 12h |
| 73 | 5.1.6 | Define Test Approach | 1.5d | 1999-05-03 | 1999-05-04 |  | 13d |  | Test Designer | 12h |
| 74 | 5.2 | **Verify Test Approach** | 1.5d | 1999-05-04 | 1999-05-05 | 67 | 13d |  |  | 84h |
| 75 | 5.2.1 | Define Test Environment Configurations | 1.5d | 1999-05-04 | 1999-05-05 |  | 13d |  | Test Designer | 12h |
| 76 | 5.2.2 | Identify Testability Mechanisms | 1.5d | 1999-05-04 | 1999-05-05 |  | 13d |  | Test Designer | 12h |
| 77 | 5.2.3 | Define Testability Elements | 1.5d | 1999-05-04 | 1999-05-05 |  | 13d |  | Test Designer | 12h |
| 78 | 5.2.4 | Define Test Details | 1.5d | 1999-05-04 | 1999-05-05 |  | 13d |  | Test Analyst | 12h |
| 79 | 5.2.5 | Implement Test Suite | 1.5d | 1999-05-04 | 1999-05-05 |  | 13d |  | Tester | 12h |
| 80 | 5.2.6 | Implement Test | 1.5d | 1999-05-04 | 1999-05-05 |  | 13d |  | Tester | 12h |
| 81 | 5.2.7 | Obtain Testability Commitment | 1.5d | 1999-05-04 | 1999-05-05 |  | 13d |  | Test Manager | 12h |

| ID | WBS | Task | Duration | Start | Finish | Predecessors | Total slack | Free slack | Resources | Work |
| --- | --- | --- | --- | --- | --- | --- | --- | --- | --- | --- |
| 82 | 5.3 | **Validate Build Stability** | 7d | 1999-05-06 | 1999-05-12 | 67SS, 64SS | 6d | 0d |  | 336h |
| 83 | 5.3.1 | Implement Test | 7d | 1999-05-06 | 1999-05-12 |  | 6d |  | Tester | 56h |
| 84 | 5.3.2 | Execute Test Suite | 7d | 1999-05-06 | 1999-05-12 |  | 6d |  | Tester | 56h |
| 85 | 5.3.3 | Analyze Test Failure | 7d | 1999-05-06 | 1999-05-12 |  | 6d |  | Tester | 56h |
| 86 | 5.3.4 | Define Test Details | 7d | 1999-05-06 | 1999-05-12 |  | 6d |  | Test Analyst | 56h |
| 87 | 5.3.5 | Determine Test Results | 7d | 1999-05-06 | 1999-05-12 |  | 6d |  | Test Analyst | 56h |
| 88 | 5.3.6 | Assess and Advocate Quality | 7d | 1999-05-06 | 1999-05-12 |  | 6d |  | Test Manager | 56h |
| 89 | 5.4 | **Test and Evaluate** | 8d | 1999-05-08 | 1999-05-15 | 82SS+2d | 3d | 0d |  | 704h |
| 90 | 5.4.1 | Implement Test | 8d | 1999-05-08 | 1999-05-15 |  | 3d |  | Tester | 64h |
| 91 | 5.4.2 | Implement Test Suite | 8d | 1999-05-08 | 1999-05-15 |  | 3d |  | Tester | 64h |
| 92 | 5.4.3 | Execute Test Suite | 8d | 1999-05-08 | 1999-05-15 |  | 3d |  | Tester | 64h |
| 93 | 5.4.4 | Analyze Test Failure | 8d | 1999-05-08 | 1999-05-15 |  | 3d |  | Tester | 64h |
| 94 | 5.4.5 | Structure the Test Implementation | 8d | 1999-05-08 | 1999-05-15 |  | 3d |  | Test Designer | 64h |
| 95 | 5.4.6 | Define Testability Elements | 8d | 1999-05-08 | 1999-05-15 |  | 3d |  | Test Designer | 64h |
| 96 | 5.4.7 | Identify Test Ideas | 8d | 1999-05-08 | 1999-05-15 |  | 3d |  | Test Analyst | 64h |
| 97 | 5.4.8 | Define Test Details | 8d | 1999-05-08 | 1999-05-15 |  | 3d |  | Test Analyst | 64h |
| 98 | 5.4.9 | Verify Changes in Build | 8d | 1999-05-08 | 1999-05-15 |  | 3d |  | Test Analyst | 64h |
| 99 | 5.4.10 | Determine Test Results | 8d | 1999-05-08 | 1999-05-15 |  | 3d |  | Test Analyst | 64h |
| 100 | 5.4.11 | Assess and Improve Test Effort | 8d | 1999-05-08 | 1999-05-15 |  | 3d |  | Test Manager | 64h |
| 101 | 5.5 | **Achieve Acceptable Mission** | 6d | 1999-05-10 | 1999-05-15 | 89SS+2d | 3d |  |  | 336h |
| 102 | 5.5.1 | Assess and Improve Test Effort | 6d | 1999-05-10 | 1999-05-15 |  | 3d |  | Test Manager | 48h |
| 103 | 5.5.2 | Assess and Advocate Quality | 6d | 1999-05-10 | 1999-05-15 |  | 3d |  | Test Manager | 48h |
| 104 | 5.5.3 | Determine Test Results | 6d | 1999-05-10 | 1999-05-15 |  | 3d |  | Test Analyst | 48h |
| 105 | 5.5.4 | Identify Test Ideas | 6d | 1999-05-10 | 1999-05-15 |  | 3d |  | Test Analyst | 48h |
| 106 | 5.5.5 | Analyze Test Failure | 6d | 1999-05-10 | 1999-05-15 |  | 3d |  | Tester | 48h |
| 107 | 5.5.6 | Implement Test | 6d | 1999-05-10 | 1999-05-15 |  | 3d |  | Tester | 48h |
| 108 | 5.5.7 | Implement Test Suite | 6d | 1999-05-10 | 1999-05-15 |  | 3d |  | Tester | 48h |

| ID | WBS | Task | Duration | Start | Finish | Predecessors | Total slack | Free slack | Resources | Work |
| --- | --- | --- | --- | --- | --- | --- | --- | --- | --- | --- |
| 109 | 5.6 | **Improve Test Assets** | 5d | 1999-05-12 | 1999-05-16 | 89SS+4d | 2d |  |  | 360h |
| 110 | 5.6.1 | Develop Test Guidelines | 5d | 1999-05-12 | 1999-05-16 |  | 2d |  | Test Designer | 40h |
| 111 | 5.6.2 | Define Testability Elements | 5d | 1999-05-12 | 1999-05-16 |  | 2d |  | Test Designer | 40h |
| 112 | 5.6.3 | Structure the Test Implementation | 5d | 1999-05-12 | 1999-05-16 |  | 2d |  | Test Designer | 40h |
| 113 | 5.6.4 | Identify Test Ideas | 5d | 1999-05-12 | 1999-05-16 |  | 2d |  | Test Analyst | 40h |
| 114 | 5.6.5 | Define Test Details | 5d | 1999-05-12 | 1999-05-16 |  | 2d |  | Test Analyst | 40h |
| 115 | 5.6.6 | Define Assessment and Traceability Needs | 5d | 1999-05-12 | 1999-05-16 |  | 2d |  | Test Analyst | 40h |
| 116 | 5.6.7 | Implement Test Suite | 5d | 1999-05-12 | 1999-05-16 |  | 2d |  | Tester | 40h |
| 117 | 5.6.8 | Implement Test | 5d | 1999-05-12 | 1999-05-16 |  | 2d |  | Tester | 40h |
| 118 | 5.6.9 | Assess and Improve Test Effort | 5d | 1999-05-12 | 1999-05-16 |  | 2d |  | Test Manager | 40h |
| 119 | 6 | **Environment** | 15d | 1999-05-03 | 1999-05-17 |  | 1d |  |  | 216h |
| 120 | 6.1 | **Prepare Environment for an Iteration** | 1d | 1999-05-03 | 1999-05-03 |  | 1d | 0d |  | 40h |
| 121 | 6.1.1 | Develop Development Case | 1d | 1999-05-03 | 1999-05-03 |  | 1d |  | Process Engineer | 8h |
| 122 | 6.1.2 | Develop Project-Specific Templates | 1d | 1999-05-03 | 1999-05-03 |  | 1d |  | Process Engineer | 8h |
| 123 | 6.1.3 | Launch Development Case | 1d | 1999-05-03 | 1999-05-03 |  | 1d |  | Process Engineer | 8h |
| 124 | 6.1.4 | Set Up Tools | 1d | 1999-05-03 | 1999-05-03 |  | 1d |  | Tool Specialist | 8h |
| 125 | 6.1.5 | Verify Tool Configuration & Installation | 1d | 1999-05-03 | 1999-05-03 |  | 1d |  | Tool Specialist | 8h |
| 126 | 6.2 | **Prepare Guidelines for an Iteration** | 1d | 1999-05-03 | 1999-05-03 |  | 15d |  |  | 64h |
| 127 | 6.2.1 | Develop Use-Case Modeling Guidelines | 1d | 1999-05-03 | 1999-05-03 |  | 15d |  | System Analyst | 8h |
| 128 | 6.2.2 | Develop Business-Modeling Guidelines | 1d | 1999-05-03 | 1999-05-03 |  | 15d |  | Business-Process Analyst | 8h |
| 129 | 6.2.3 | Develop User-Interface Guidelines | 1d | 1999-05-03 | 1999-05-03 |  | 15d |  | User-Interface Designer | 8h |
| 130 | 6.2.4 | Develop Design Guidelines | 1d | 1999-05-03 | 1999-05-03 |  | 15d |  | Software Architect | 8h |
| 131 | 6.2.5 | Develop Programming Guidelines | 1d | 1999-05-03 | 1999-05-03 |  | 15d |  | Software Architect | 8h |
| 132 | 6.2.6 | Develop Manual Styleguide | 1d | 1999-05-03 | 1999-05-03 |  | 15d |  | Technical Writer | 8h |
| 133 | 6.2.7 | Develop Test Guidelines | 1d | 1999-05-03 | 1999-05-03 |  | 15d |  | Test Designer | 8h |
| 134 | 6.2.8 | Develop Tool Guidelines | 1d | 1999-05-03 | 1999-05-03 |  | 15d |  | Tool Specialist | 8h |

| ID | WBS | Task | Duration | Start | Finish | Predecessors | Total slack | Resources | Work |
| --- | --- | --- | --- | --- | --- | --- | --- | --- | --- |
| 135 | 6.3 | **Support Environment During an Iteration** | 14d | 1999-05-04 | 1999-05-17 | 120 | 1d |  | 112h |
| 136 | 6.3.1 | Support Development | 14d | 1999-05-04 | 1999-05-17 |  | 1d | System Administrator | 112h |
| 137 | 7 | **Configuration & Change Management** | 15d | 1999-05-03 | 1999-05-17 |  | 1d |  | 1920h |
| 138 | 7.1 | **Change and Deliver Configuration Items** | 15d | 1999-05-03 | 1999-05-17 |  | 1d |  | 720h |
| 139 | 7.1.1 | Create Baselines | 15d | 1999-05-03 | 1999-05-17 |  | 1d | Integrator | 120h |
| 140 | 7.1.2 | Promote Baselines | 15d | 1999-05-03 | 1999-05-17 |  | 1d | Integrator | 120h |
| 141 | 7.1.3 | Create Development Workspace | 15d | 1999-05-03 | 1999-05-17 |  | 1d | Any Worker | 120h |
| 142 | 7.1.4 | Make Changes | 15d | 1999-05-03 | 1999-05-17 |  | 1d | Any Worker | 120h |
| 143 | 7.1.5 | Deliver Changes | 15d | 1999-05-03 | 1999-05-17 |  | 1d | Any Worker | 120h |
| 144 | 7.1.6 | Update Workspace | 15d | 1999-05-03 | 1999-05-17 |  | 1d | Any Worker | 120h |
| 145 | 7.2 | **Manage Baselines and Releases** | 15d | 1999-05-03 | 1999-05-17 |  | 1d |  | 360h |
| 146 | 7.2.1 | Create Baselines | 15d | 1999-05-03 | 1999-05-17 |  | 1d | Integrator | 120h |
| 147 | 7.2.2 | Promote Baselines | 15d | 1999-05-03 | 1999-05-17 |  | 1d | Integrator | 120h |
| 148 | 7.2.3 | Create Deployment Unit | 15d | 1999-05-03 | 1999-05-17 |  | 1d | Configuration Manager | 120h |
| 149 | 7.3 | **Manage Change Requests** | 15d | 1999-05-03 | 1999-05-17 |  | 1d |  | 600h |
| 150 | 7.3.1 | Submit Change Request | 15d | 1999-05-03 | 1999-05-17 |  | 1d | Any Worker | 120h |
| 151 | 7.3.2 | Update Change Request | 15d | 1999-05-03 | 1999-05-17 |  | 1d | Any Worker | 120h |
| 152 | 7.3.3 | Review Change Request | 15d | 1999-05-03 | 1999-05-17 |  | 1d | Change Control Manager | 120h |
| 153 | 7.3.4 | Confirm Duplicate or Rejected Change Request | 15d | 1999-05-03 | 1999-05-17 |  | 1d | Change Control Manager | 120h |
| 154 | 7.3.5 | Verify Changes in Build | 15d | 1999-05-03 | 1999-05-17 |  | 1d | Integrator | 120h |
| 155 | 7.4 | **Monitor and Report Configuration Status** | 15d | 1999-05-03 | 1999-05-17 |  | 1d |  | 240h |
| 156 | 7.4.1 | Report on Configuration Status | 15d | 1999-05-03 | 1999-05-17 |  | 1d | Configuration Manager | 120h |
| 157 | 7.4.2 | Perform Configuration Audits | 15d | 1999-05-03 | 1999-05-17 |  | 1d | Configuration Manager | 120h |
