# detail_elaboration_iteration

Schedule from MS Project, 1999-05-03 to 1999-05-18.
Rational Software Corporation

## Calendars

- Standard: Mon-Fri 08:00-12:00, 13:00-17:00; Sat-Sun off. Exceptions (off unless hours are given): 1999-05-01 to 1999-05-31 08:00-12:00, 13:00-17:00.

## Resources

| Resource | Cost per use |
| --- | --- |
| Fred |  |
| System Analyst | 300 |
| Architect |  |
| Designer |  |
| Design Reviewer |  |
| Project Manager |  |
| Project Reviewer |  |
| Use-Case Specifier |  |
| User-Interface Designer |  |
| Requirements Reviewer |  |
| Database Designer |  |
| Architecture Reviewer |  |
| System Integrator |  |
| Implementer |  |
| Code Reviewer |  |
| Test Designer |  |
| Tester |  |
| Process Engineer |  |
| Toolsmith |  |
| Business-Process Analyst |  |
| Technical Writer |  |
| System Administrator |  |
| Any Worker |  |
| Configuration Manager |  |
| Change Control Manager |  |
| Tool Specialist |  |
| Integrator |  |
| Software Architect |  |
| Test Manager |  |
| Test Analyst |  |
| test d |  |

## Schedule

| ID | WBS | Task | Duration | Start | Finish | Predecessors | Total slack | Resources | Work |
| --- | --- | --- | --- | --- | --- | --- | --- | --- | --- |
| 1 | 1 | **Project Management** | 16d | 1999-05-03 | 1999-05-18 |  | 0d |  | 1320h |
| 2 | 1.1 | **Manage Iteration** | 14d | 1999-05-03 | 1999-05-16 |  | 0d |  | 560h |
| 3 | 1.1.1 | Acquire Staff | 14d | 1999-05-03 | 1999-05-16 |  | 0d | Project Manager | 112h |
| 4 | 1.1.2 | Initiate Iteration | 14d | 1999-05-03 | 1999-05-16 |  | 0d | Project Manager | 112h |
| 5 | 1.1.3 | Assess Iteration | 14d | 1999-05-03 | 1999-05-16 |  | 0d | Project Manager | 112h |
| 6 | 1.1.4 | Iteration Evaluation Criteria Review | 14d | 1999-05-03 | 1999-05-16 |  | 0d | Project Reviewer | 112h |
| 7 | 1.1.5 | Iteration Acceptance Review | 14d | 1999-05-03 | 1999-05-16 |  | 0d | Project Reviewer | 112h |
| 8 | 1.2 | **Monitor and Control Project** | 16d | 1999-05-03 | 1999-05-18 | 2SS | 0d |  | 640h |
| 9 | 1.2.1 | Schedule and Assign Work | 16d | 1999-05-03 | 1999-05-18 |  | 0d | Project Manager | 128h |
| 10 | 1.2.2 | Monitor Project Status | 16d | 1999-05-03 | 1999-05-18 |  | 0d | Project Manager | 128h |
| 11 | 1.2.3 | Report Status | 16d | 1999-05-03 | 1999-05-18 |  | 0d | Project Manager | 128h |
| 12 | 1.2.4 | Handle Exceptions and Problems | 16d | 1999-05-03 | 1999-05-18 |  | 0d | Project Manager | 128h |
| 13 | 1.2.5 | Project Review Authority (PRA) Project Review | 16d | 1999-05-03 | 1999-05-18 |  | 0d | Project Reviewer | 128h |
| 14 | 1.3 | **Reevaluate Project Scope and Risk** | 1d | 1999-05-17 | 1999-05-17 | 2 | 0d |  | 16h |
| 15 | 1.3.1 | Identify and Assess Risks | 1d | 1999-05-17 | 1999-05-17 |  | 0d | Project Manager | 8h |
| 16 | 1.3.2 | Develop Business Case | 1d | 1999-05-17 | 1999-05-17 |  | 0d | Project Manager | 8h |
| 17 | 1.4 | **Plan for Next Iteration** | 1d | 1999-05-18 | 1999-05-18 | 14 | 0d |  | 24h |
| 18 | 1.4.1 | Develop Iteration Plan | 1d | 1999-05-18 | 1999-05-18 |  | 0d | Project Manager | 8h |
| 19 | 1.4.2 | Develop Business case | 1d | 1999-05-18 | 1999-05-18 |  | 0d | Project Manager | 8h |
| 20 | 1.4.3 | Iteration Plan Review | 1d | 1999-05-18 | 1999-05-18 | 30FF | 0d | Project Reviewer | 8h |
| 21 | 1.5 | **Refine Software Development Plan** | 1d | 1999-05-18 | 1999-05-18 | 14 | 0d | Project Manager | 80h |
| 22 | 1.5.1 | Develop Measurement Plan | 1d | 1999-05-18 | 1999-05-18 |  | 0d | Project Manager | 8h |
| 23 | 1.5.2 | Develop Risk Management Plan | 1d | 1999-05-18 | 1999-05-18 |  | 0d | Project Manager | 8h |
| 24 | 1.5.3 | Develop Product Acceptance Plan | 1d | 1999-05-18 | 1999-05-18 |  | 0d | Project Manager | 8h |
| 25 | 1.5.4 | Develop Problem Resolution Plan | 1d | 1999-05-18 | 1999-05-18 |  | 0d | Project Manager | 8h |
| 26 | 1.5.5 | Define Project Organization and Staffing | 1d | 1999-05-18 | 1999-05-18 |  | 0d | Project Manager | 8h |
| 27 | 1.5.6 | Define Monitoring & Control Processes | 1d | 1999-05-18 | 1999-05-18 |  | 0d | Project Manager | 8h |
| 28 | 1.5.7 | Plan Phases and Iterations | 1d | 1999-05-18 | 1999-05-18 |  | 0d | Project Manager | 8h |
| 29 | 1.5.8 | Compile Software Development Plan | 1d | 1999-05-18 | 1999-05-18 |  | 0d | Project Manager | 8h |
| 30 | 1.5.9 | Project Planning Review | 1d | 1999-05-18 | 1999-05-18 |  | 0d | Project Reviewer | 8h |

| ID | WBS | Task | Duration | Start | Finish | Predecessors | Total slack | Free slack | Resources | Work |
| --- | --- | --- | --- | --- | --- | --- | --- | --- | --- | --- |
| 31 | 2 | **Requirements** | 15d | 1999-05-03 | 1999-05-17 |  | 1d |  |  | 864h |
| 32 | 2.1 | **Analyze the Problem** | 2d | 1999-05-03 | 1999-05-04 | 37SS | 14d | 0d |  | 64h |
| 33 | 2.1.1 | Capture a Common Vocabulary | 2d | 1999-05-03 | 1999-05-04 |  | 14d |  | System Analyst | 16h |
| 34 | 2.1.2 | Find Actors and Use Cases | 2d | 1999-05-03 | 1999-05-04 |  | 14d |  | System Analyst | 16h |
| 35 | 2.1.3 | Develop Vision | 2d | 1999-05-03 | 1999-05-04 |  | 14d |  | System Analyst | 16h |
| 36 | 2.1.4 | Develop Requirements Management Plan | 2d | 1999-05-03 | 1999-05-04 |  | 14d |  | System Analyst | 16h |
| 37 | 2.2 | **Understand Stakeholder Needs** | 2d | 1999-05-03 | 1999-05-04 |  | 14d | 0d |  | 80h |
| 38 | 2.2.1 | Capture a Common Vocabulary | 2d | 1999-05-03 | 1999-05-04 |  | 14d |  | System Analyst | 16h |
| 39 | 2.2.2 | Elicit Stakeholder Requests | 2d | 1999-05-03 | 1999-05-04 |  | 14d |  | System Analyst | 16h |
| 40 | 2.2.3 | Develop Vision | 2d | 1999-05-03 | 1999-05-04 |  | 14d |  | System Analyst | 16h |
| 41 | 2.2.4 | Find Actors and Use Cases | 2d | 1999-05-03 | 1999-05-04 |  | 14d |  | System Analyst | 16h |
| 42 | 2.2.5 | Manage Dependencies | 2d | 1999-05-03 | 1999-05-04 |  | 14d |  | System Analyst | 16h |
| 43 | 2.3 | **Define the System** | 2d | 1999-05-03 | 1999-05-04 |  | 2d | 0d |  | 48h |
| 44 | 2.3.1 | Capture a Common Vocabulary | 2d | 1999-05-03 | 1999-05-04 |  | 2d |  | System Analyst | 16h |
| 45 | 2.3.2 | Find Actors and Use Cases | 2d | 1999-05-03 | 1999-05-04 |  | 2d |  | System Analyst | 16h |
| 46 | 2.3.3 | Manage Dependencies | 2d | 1999-05-03 | 1999-05-04 |  | 2d |  | System Analyst | 16h |
| 47 | 2.4 | **Manage the Scope of the System** | 1d | 1999-05-04 | 1999-05-04 | 43SS+1d | 2d |  |  | 24h |
| 48 | 2.4.1 | Develop Vision | 1d | 1999-05-04 | 1999-05-04 |  | 14d |  | System Analyst | 8h |
| 49 | 2.4.2 | Manage Dependencies | 1d | 1999-05-04 | 1999-05-04 |  | 14d |  | System Analyst | 8h |
| 50 | 2.4.3 | Prioritize Use Cases | 1d | 1999-05-04 | 1999-05-04 |  | 2d | 0d | Software Architect | 8h |
| 51 | 2.5 | **Refine the System Definition** | 12d | 1999-05-05 | 1999-05-16 | 43, 50 | 2d |  |  | 336h |
| 52 | 2.5.1 | Detail a Use Case | 9d | 1999-05-05 | 1999-05-13 |  | 5d |  | Use-Case Specifier | 72h |
| 53 | 2.5.2 | Detail the Software Requirements | 12d | 1999-05-05 | 1999-05-16 |  | 2d |  | Use-Case Specifier | 96h |
| 54 | 2.5.3 | Model the User Interface | 9d | 1999-05-05 | 1999-05-13 |  | 5d |  | User-Interface Designer | 72h |
| 55 | 2.5.4 | Prototype the User Interface | 12d | 1999-05-05 | 1999-05-16 |  | 2d |  | User-Interface Designer | 96h |

| ID | WBS | Task | Duration | Start | Finish | Predecessors | Total slack | Free slack | Resources | Work |
| --- | --- | --- | --- | --- | --- | --- | --- | --- | --- | --- |
| 56 | 2.6 | **Manage Changing Requirements** | 15d | 1999-05-03 | 1999-05-17 | 32SS | 1d |  |  | 312h |
| 57 | 2.6.1 | Structure the Use-Case Model | 12d | 1999-05-03 | 1999-05-14 |  | 4d |  | System Analyst | 96h |
| 58 | 2.6.2 | Manage Dependencies | 12d | 1999-05-03 | 1999-05-14 |  | 4d |  | System Analyst | 96h |
| 59 | 2.6.3 | Review Requirements | 15d | 1999-05-03 | 1999-05-17 |  | 1d |  | Requirements Reviewer | 120h |
| 60 | 3 | **Analysis and Design** | 14d | 1999-05-03 | 1999-05-16 |  | 2d |  |  | 1008h |
| 61 | 3.1 | **Define a Candidate Architecture** | 2d | 1999-05-03 | 1999-05-04 |  | 2d | 0d |  | 32h |
| 62 | 3.1.1 | Architectural Analysis | 2d | 1999-05-03 | 1999-05-04 |  | 2d | 0d | Software Architect | 16h |
| 63 | 3.1.2 | Use-Case Analysis | 2d | 1999-05-03 | 1999-05-04 |  | 2d |  | Designer | 16h |
| 64 | 3.2 | **Analyze Behavior** | 3d | 1999-05-05 | 1999-05-07 | 62 | 11d | 0d |  | 72h |
| 65 | 3.2.1 | Identify Design Elements | 3d | 1999-05-05 | 1999-05-07 |  | 11d |  | Software Architect | 24h |
| 66 | 3.2.2 | Use-Case Analysis | 3d | 1999-05-05 | 1999-05-07 |  | 11d |  | Designer | 24h |
| 67 | 3.2.3 | Review the Design | 3d | 1999-05-05 | 1999-05-07 |  | 11d |  | Design Reviewer | 24h |
| 68 | 3.3 | **Design Components** | 8d | 1999-05-06 | 1999-05-13 | 64SS+1d | 5d | 0d |  | 256h |
| 69 | 3.3.1 | Use-Case Design | 8d | 1999-05-06 | 1999-05-13 |  | 5d |  | Designer | 64h |
| 70 | 3.3.2 | Class Design | 8d | 1999-05-06 | 1999-05-13 |  | 5d |  | Designer | 64h |
| 71 | 3.3.3 | Subsystem Design | 8d | 1999-05-06 | 1999-05-13 |  | 5d |  | Designer | 64h |
| 72 | 3.3.4 | Review the Design | 8d | 1999-05-06 | 1999-05-13 |  | 5d |  | Design Reviewer | 64h |
| 73 | 3.4 | **Design the Database** | 8d | 1999-05-06 | 1999-05-13 | 68SS | 5d |  |  | 192h |
| 74 | 3.4.1 | Class Design | 8d | 1999-05-06 | 1999-05-13 |  | 5d |  | Designer | 64h |
| 75 | 3.4.2 | Database Design | 8d | 1999-05-06 | 1999-05-13 |  | 5d |  | Database Designer | 64h |
| 76 | 3.4.3 | Review the Design | 8d | 1999-05-06 | 1999-05-13 |  | 5d |  | Design Reviewer | 64h |
| 77 | 3.5 | **Refine the Architecture** | 12d | 1999-05-05 | 1999-05-16 | 61 | 2d |  |  | 456h |
| 78 | 3.5.1 | Identify Design Mechanisms | 9d | 1999-05-05 | 1999-05-13 |  | 5d |  | Software Architect | 72h |
| 79 | 3.5.2 | Identify Design Elements | 9d | 1999-05-05 | 1999-05-13 |  | 5d |  | Software Architect | 72h |
| 80 | 3.5.3 | Incorporate Existing Design Elements | 9d | 1999-05-05 | 1999-05-13 |  | 5d |  | Software Architect | 72h |
| 81 | 3.5.4 | Describe the Run-time Architecture | 9d | 1999-05-05 | 1999-05-13 |  | 5d |  | Software Architect | 72h |
| 82 | 3.5.5 | Describe Distribution | 9d | 1999-05-05 | 1999-05-13 |  | 5d |  | Software Architect | 72h |
| 83 | 3.5.6 | Review the Architecture | 12d | 1999-05-05 | 1999-05-16 |  | 2d |  | Architecture Reviewer | 96h |

| ID | WBS | Task | Duration | Start | Finish | Predecessors | Total slack | Free slack | Resources | Work |
| --- | --- | --- | --- | --- | --- | --- | --- | --- | --- | --- |
| 84 | 4 | **Implementation** | 7d | 1999-05-05 | 1999-05-11 |  | 7d |  |  | 192h |
| 85 | 4.1 | **Structure the Implementation Model** | 1d | 1999-05-05 | 1999-05-05 | 61 | 13d |  |  | 8h |
| 86 | 4.1.1 | Structure the Implementation Model | 1d | 1999-05-05 | 1999-05-05 |  | 13d |  | Software Architect | 8h |
| 87 | 4.2 | **Plan the Integration** | 2d | 1999-05-06 | 1999-05-07 | 64SS+1d | 8d | 0d |  | 16h |
| 88 | 4.2.1 | Plan System Integration | 2d | 1999-05-06 | 1999-05-07 |  | 8d |  | Integrator | 16h |
| 89 | 4.3 | **Implement Components** | 3d | 1999-05-07 | 1999-05-09 | 68SS+1d | 9d | 0d |  | 120h |
| 90 | 4.3.1 | Plan Subsystem Integration | 3d | 1999-05-07 | 1999-05-09 |  | 9d |  | Integrator | 24h |
| 91 | 4.3.2 | Implement Component | 3d | 1999-05-07 | 1999-05-09 |  | 9d |  | Implementer | 24h |
| 92 | 4.3.3 | Fix a Defect | 3d | 1999-05-07 | 1999-05-09 |  | 9d |  | Implementer | 24h |
| 93 | 4.3.4 | Perform Unit Tests | 3d | 1999-05-07 | 1999-05-09 |  | 9d |  | Implementer | 24h |
| 94 | 4.3.5 | Review Code | 3d | 1999-05-07 | 1999-05-09 |  | 9d |  | Code Reviewer | 24h |
| 95 | 4.4 | **Integrate Each Subsystem** | 3d | 1999-05-08 | 1999-05-10 | 89SS+1d, 87 | 8d | 0d |  | 24h |
| 96 | 4.4.1 | Integrate Subsystem | 3d | 1999-05-08 | 1999-05-10 |  | 8d |  | Integrator | 24h |
| 97 | 4.5 | **Integrate the System** | 3d | 1999-05-09 | 1999-05-11 | 95SS+1d | 7d | 0d |  | 24h |
| 98 | 4.5.1 | Integrate System | 3d | 1999-05-09 | 1999-05-11 |  | 7d |  | Integrator | 24h |
| 99 | 5 | **Test** | 12d | 1999-05-03 | 1999-05-14 |  | 4d |  |  | 1088h |
| 100 | 5.1 | **Define Evaluation Mission** | 2d | 1999-05-03 | 1999-05-04 |  | 9d | 0d |  | 96h |
| 101 | 5.1.1 | Identify Test Motivators | 2d | 1999-05-03 | 1999-05-04 |  | 9d |  | Test Manager | 16h |
| 102 | 5.1.2 | Agree Mission | 2d | 1999-05-03 | 1999-05-04 |  | 9d |  | Test Manager | 16h |
| 103 | 5.1.3 | Identify Targets of Test | 2d | 1999-05-03 | 1999-05-04 |  | 9d |  | Test Analyst | 16h |
| 104 | 5.1.4 | Define Assessment and Traceability Needs | 2d | 1999-05-03 | 1999-05-04 |  | 9d |  | Test Analyst | 16h |
| 105 | 5.1.5 | Identify Test Ideas | 2d | 1999-05-03 | 1999-05-04 |  | 9d |  | Test Analyst | 16h |
| 106 | 5.1.6 | Define Test Approach | 2d | 1999-05-03 | 1999-05-04 |  | 9d |  | Test Designer | 16h |
| 107 | 5.2 | **Verify Test Approach** | 2d | 1999-05-05 | 1999-05-06 | 100 | 12d |  |  | 112h |
| 108 | 5.2.1 | Define Test Environment Configurations | 2d | 1999-05-05 | 1999-05-06 |  | 12d |  | Test Designer | 16h |
| 109 | 5.2.2 | Identify Testability Mechanisms | 2d | 1999-05-05 | 1999-05-06 |  | 12d |  | Test Designer | 16h |
| 110 | 5.2.3 | Define Testability Elements | 2d | 1999-05-05 | 1999-05-06 |  | 12d |  | Test Designer | 16h |
| 111 | 5.2.4 | Define Test Details | 2d | 1999-05-05 | 1999-05-06 |  | 12d |  | Test Analyst | 16h |
| 112 | 5.2.5 | Implement Test Suite | 2d | 1999-05-05 | 1999-05-06 |  | 12d |  | Tester | 16h |
| 113 | 5.2.6 | Implement Test | 2d | 1999-05-05 | 1999-05-06 |  | 12d |  | Tester | 16h |
| 114 | 5.2.7 | Obtain Testability Commitment | 2d | 1999-05-05 | 1999-05-06 |  | 12d |  | Test Manager | 16h |

| ID | WBS | Task | Duration | Start | Finish | Predecessors | Total slack | Free slack | Resources | Work |
| --- | --- | --- | --- | --- | --- | --- | --- | --- | --- | --- |
| 115 | 5.3 | **Test and Evaluate** | 5d | 1999-05-09 | 1999-05-13 | 100, 97SS | 5d | 0d |  | 440h |
| 116 | 5.3.1 | Implement Test | 5d | 1999-05-09 | 1999-05-13 |  | 5d |  | Tester | 40h |
| 117 | 5.3.2 | Implement Test Suite | 5d | 1999-05-09 | 1999-05-13 |  | 5d |  | Tester | 40h |
| 118 | 5.3.3 | Execute Test Suite | 5d | 1999-05-09 | 1999-05-13 |  | 5d |  | Tester | 40h |
| 119 | 5.3.4 | Analyze Test Failure | 5d | 1999-05-09 | 1999-05-13 |  | 5d |  | Tester | 40h |
| 120 | 5.3.5 | Structure the Test Implementation | 5d | 1999-05-09 | 1999-05-13 |  | 5d |  | Test Designer | 40h |
| 121 | 5.3.6 | Define Testability Elements | 5d | 1999-05-09 | 1999-05-13 |  | 5d |  | Test Designer | 40h |
| 122 | 5.3.7 | Identify Test Ideas | 5d | 1999-05-09 | 1999-05-13 |  | 5d |  | Test Analyst | 40h |
| 123 | 5.3.8 | Define Test Details | 5d | 1999-05-09 | 1999-05-13 |  | 5d |  | Test Analyst | 40h |
| 124 | 5.3.9 | Verify Changes in Build | 5d | 1999-05-09 | 1999-05-13 |  | 5d |  | Test Analyst | 40h |
| 125 | 5.3.10 | Determine Test Results | 5d | 1999-05-09 | 1999-05-13 |  | 5d |  | Test Analyst | 40h |
| 126 | 5.3.11 | Assess and Improve Test Effort | 5d | 1999-05-09 | 1999-05-13 |  | 5d |  | Test Manager | 40h |
| 127 | 5.4 | **Achieve Acceptable Mission** | 4d | 1999-05-10 | 1999-05-13 | 115SS+1d | 5d |  |  | 224h |
| 128 | 5.4.1 | Assess and Improve Test Effort | 4d | 1999-05-10 | 1999-05-13 |  | 5d |  | Test Manager | 32h |
| 129 | 5.4.2 | Assess and Advocate Quality | 4d | 1999-05-10 | 1999-05-13 |  | 5d |  | Test Manager | 32h |
| 130 | 5.4.3 | Determine Test Results | 4d | 1999-05-10 | 1999-05-13 |  | 5d |  | Test Analyst | 32h |
| 131 | 5.4.4 | Identify Test Ideas | 4d | 1999-05-10 | 1999-05-13 |  | 5d |  | Test Analyst | 32h |
| 132 | 5.4.5 | Analyze Test Failure | 4d | 1999-05-10 | 1999-05-13 |  | 5d |  | Tester | 32h |
| 133 | 5.4.6 | Implement Test | 4d | 1999-05-10 | 1999-05-13 |  | 5d |  | Tester | 32h |
| 134 | 5.4.7 | Implement Test Suite | 4d | 1999-05-10 | 1999-05-13 |  | 5d |  | Tester | 32h |
| 135 | 5.5 | **Improve Test Assets** | 3d | 1999-05-12 | 1999-05-14 | 115SS+3d | 4d |  |  | 216h |
| 136 | 5.5.1 | Develop Test Guidelines | 3d | 1999-05-12 | 1999-05-14 |  | 4d |  | Test Designer | 24h |
| 137 | 5.5.2 | Define Testability Elements | 3d | 1999-05-12 | 1999-05-14 |  | 4d |  | Test Designer | 24h |
| 138 | 5.5.3 | Structure the Test Implementation | 3d | 1999-05-12 | 1999-05-14 |  | 4d |  | Test Designer | 24h |
| 139 | 5.5.4 | Identify Test Ideas | 3d | 1999-05-12 | 1999-05-14 |  | 4d |  | Test Analyst | 24h |
| 140 | 5.5.5 | Define Test Details | 3d | 1999-05-12 | 1999-05-14 |  | 4d |  | Test Analyst | 24h |
| 141 | 5.5.6 | Define Assessment and Traceability Needs | 3d | 1999-05-12 | 1999-05-14 |  | 4d |  | Test Analyst | 24h |
| 142 | 5.5.7 | Implement Test Suite | 3d | 1999-05-12 | 1999-05-14 |  | 4d |  | Tester | 24h |
| 143 | 5.5.8 | Implement Test | 3d | 1999-05-12 | 1999-05-14 |  | 4d |  | Tester | 24h |
| 144 | 5.5.9 | Assess and Improve Test Effort | 3d | 1999-05-12 | 1999-05-14 |  | 4d |  | Test Manager | 24h |

| ID | WBS | Task | Duration | Start | Finish | Predecessors | Total slack | Free slack | Resources | Work |
| --- | --- | --- | --- | --- | --- | --- | --- | --- | --- | --- |
| 145 | 6 | **Environment** | 15d | 1999-05-03 | 1999-05-17 |  | 1d |  |  | 216h |
| 146 | 6.1 | **Prepare Environment for an Iteration** | 1d | 1999-05-03 | 1999-05-03 |  | 1d | 0d |  | 40h |
| 147 | 6.1.1 | Develop Development Case | 1d | 1999-05-03 | 1999-05-03 |  | 1d |  | Process Engineer | 8h |
| 148 | 6.1.2 | Develop Project-Specific Templates | 1d | 1999-05-03 | 1999-05-03 |  | 1d |  | Process Engineer | 8h |
| 149 | 6.1.3 | Launch Development Case | 1d | 1999-05-03 | 1999-05-03 |  | 1d |  | Process Engineer | 8h |
| 150 | 6.1.4 | Set Up Tools | 1d | 1999-05-03 | 1999-05-03 |  | 1d |  | Tool Specialist | 8h |
| 151 | 6.1.5 | Verify Tool Configuration & Installation | 1d | 1999-05-03 | 1999-05-03 |  | 1d |  | Tool Specialist | 8h |
| 152 | 6.2 | **Prepare Guidelines for an Iteration** | 1d | 1999-05-03 | 1999-05-03 |  | 15d |  |  | 64h |
| 153 | 6.2.1 | Develop Use-Case Modeling Guidelines | 1d | 1999-05-03 | 1999-05-03 |  | 15d |  | System Analyst | 8h |
| 154 | 6.2.2 | Develop Business-Modeling Guidelines | 1d | 1999-05-03 | 1999-05-03 |  | 15d |  | Business-Process Analyst | 8h |
| 155 | 6.2.3 | Develop User-Interface Guidelines | 1d | 1999-05-03 | 1999-05-03 |  | 15d |  | User-Interface Designer | 8h |
| 156 | 6.2.4 | Develop Design Guidelines | 1d | 1999-05-03 | 1999-05-03 |  | 15d |  | Software Architect | 8h |
| 157 | 6.2.5 | Develop Programming Guidelines | 1d | 1999-05-03 | 1999-05-03 |  | 15d |  | Software Architect | 8h |
| 158 | 6.2.6 | Develop Manual Styleguide | 1d | 1999-05-03 | 1999-05-03 |  | 15d |  | Technical Writer | 8h |
| 159 | 6.2.7 | Develop Test Guidelines | 1d | 1999-05-03 | 1999-05-03 |  | 15d |  | Test Designer | 8h |
| 160 | 6.2.8 | Develop Tool Guidelines | 1d | 1999-05-03 | 1999-05-03 |  | 15d |  | Tool Specialist | 8h |
| 161 | 6.3 | **Support Environment During an Iteration** | 14d | 1999-05-04 | 1999-05-17 | 146 | 1d |  |  | 112h |
| 162 | 6.3.1 | Support Development | 14d | 1999-05-04 | 1999-05-17 |  | 1d |  | System Administrator | 112h |
| 163 | 7 | **Configuration & Change Management** | 15d | 1999-05-03 | 1999-05-17 |  | 1d |  |  | 1816h |
| 164 | 7.1 | **Change and Deliver Configuration Items** | 15d | 1999-05-03 | 1999-05-17 |  | 1d |  |  | 640h |
| 165 | 7.1.1 | Create Baselines | 13d | 1999-05-03 | 1999-05-15 |  | 3d |  | Integrator | 104h |
| 166 | 7.1.2 | Promote Baselines | 13d | 1999-05-03 | 1999-05-15 |  | 3d |  | Integrator | 104h |
| 167 | 7.1.3 | Create Development Workspace | 13d | 1999-05-03 | 1999-05-15 |  | 3d |  | Any Worker | 104h |
| 168 | 7.1.4 | Make Changes | 13d | 1999-05-03 | 1999-05-15 |  | 3d |  | Any Worker | 104h |
| 169 | 7.1.5 | Deliver Changes | 13d | 1999-05-03 | 1999-05-15 |  | 3d |  | Any Worker | 104h |
| 170 | 7.1.6 | Update Workspace | 15d | 1999-05-03 | 1999-05-17 |  | 1d |  | Any Worker | 120h |

| ID | WBS | Task | Duration | Start | Finish | Total slack | Resources | Work |
| --- | --- | --- | --- | --- | --- | --- | --- | --- |
| 171 | 7.2 | **Manage Baselines and Releases** | 15d | 1999-05-03 | 1999-05-17 | 1d |  | 344h |
| 172 | 7.2.1 | Create Deployment Unit | 15d | 1999-05-03 | 1999-05-17 | 1d | Configuration Manager | 120h |
| 173 | 7.2.2 | Create Baselines | 13d | 1999-05-03 | 1999-05-15 | 3d | Integrator | 104h |
| 174 | 7.2.3 | Promote Baselines | 15d | 1999-05-03 | 1999-05-17 | 1d | Integrator | 120h |
| 175 | 7.3 | **Manage Change Requests** | 15d | 1999-05-03 | 1999-05-17 | 1d |  | 592h |
| 176 | 7.3.1 | Submit Change Request | 14d | 1999-05-03 | 1999-05-16 | 2d | Any Worker | 112h |
| 177 | 7.3.2 | Update Change Request | 15d | 1999-05-03 | 1999-05-17 | 1d | Any Worker | 120h |
| 178 | 7.3.3 | Review Change Request | 15d | 1999-05-03 | 1999-05-17 | 1d | Change Control Manager | 120h |
| 179 | 7.3.4 | Confirm Duplicate or Rejected Change Request | 15d | 1999-05-03 | 1999-05-17 | 1d | Change Control Manager | 120h |
| 180 | 7.3.5 | Verify Changes in Build | 15d | 1999-05-03 | 1999-05-17 | 1d | Integrator | 120h |
| 181 | 7.4 | **Monitor and Report Configuration Status** | 15d | 1999-05-03 | 1999-05-17 | 1d |  | 240h |
| 182 | 7.4.1 | Report on Configuration Status | 15d | 1999-05-03 | 1999-05-17 | 1d | Configuration Manager | 120h |
| 183 | 7.4.2 | Perform Configuration Audits | 15d | 1999-05-03 | 1999-05-17 | 1d | Configuration Manager | 120h |
