# inception_iteration

Schedule from MS Project, 1999-05-03 to 1999-05-12.
Rational Software Corporation

## Calendars

- Standard: Mon-Sun 08:00-12:00, 13:00-17:00.

## Schedule

| ID | WBS | Task | Duration | Start | Finish | Predecessors | Total slack | Free slack | Constraint |
| --- | --- | --- | --- | --- | --- | --- | --- | --- | --- |
| 1 | 1 | **Project Management** | 10d | 1999-05-03 | 1999-05-12 |  | 0d |  |  |
| 2 | 1.1 | Conceive New Project | 1d | 1999-05-03 | 1999-05-03 |  | 0d |  |  |
| 3 | 1.2 | Evaluate Project Scope and Risk | 1d | 1999-05-04 | 1999-05-04 | 2 | 0d |  |  |
| 4 | 1.3 | Develop Software Development Plan | 1d | 1999-05-05 | 1999-05-05 | 3, 19SS | 0d |  |  |
| 5 | 1.4 | Plan for Next Iteration | 1d | 1999-05-06 | 1999-05-06 | 4 | 0d |  |  |
| 6 | 1.5 | Manage Iteration | 5d | 1999-05-07 | 1999-05-11 | 5, 21FF, 24FF | 0d |  |  |
| 7 | 1.6 | Monitor and Control Project | 5d | 1999-05-07 | 1999-05-11 | 4, 6FF | 1d |  |  |
| 8 | 1.7 | Reevaluate Project Scope and Risk | 1d | 1999-05-12 | 1999-05-12 | 6 | 0d |  |  |
| 9 | 2 | **Business Modeling** | 5d | 1999-05-03 | 1999-05-07 |  | 5d |  |  |
| 10 | 2.1 | Assess Business Status | 1d | 1999-05-03 | 1999-05-03 |  | 5d | 0d |  |
| 11 | 2.2 | Identify Business Processes | 1d | 1999-05-04 | 1999-05-04 | 10 | 8d |  |  |
| 12 | 2.3 | Refine Business Processes | 2d | 1999-05-04 | 1999-05-05 | 10 | 7d |  |  |
| 13 | 2.4 | Design Business Process Realizations | 4d | 1999-05-04 | 1999-05-07 | 10 | 5d | 0d |  |
| 14 | 2.5 | Refine Roles and Responsibilities | 1d | 1999-05-07 | 1999-05-07 | 13FF | 5d |  |  |
| 15 | 2.6 | Explore Process Automation | 4d | 1999-05-04 | 1999-05-07 | 10 | 5d |  |  |
| 16 | 3 | **Requirements** | 9d | 1999-05-04 | 1999-05-12 |  | 0d |  |  |
| 17 | 3.1 | Analyze the Problem | 3d | 1999-05-04 | 1999-05-06 | 2SS, 18FF | 1d |  | start no earlier than 1999-05-04 |
| 18 | 3.2 | Understand Stakeholder Needs | 3d | 1999-05-04 | 1999-05-06 | 2SS | 1d | 0d | start no earlier than 1999-05-04 |
| 19 | 3.3 | Define the System | 3d | 1999-05-04 | 1999-05-06 | 2 | 0d |  |  |
| 20 | 3.4 | Manage the Scope of the System | 2d | 1999-05-05 | 1999-05-06 | 19SS+1d | 0d |  |  |
| 21 | 3.5 | Refine the System Definition | 5d | 1999-05-07 | 1999-05-11 | 5, 20, 19 | 0d |  |  |
| 22 | 3.6 | Manage Changing Requirements | 8d | 1999-05-05 | 1999-05-12 | 17SS, 8FF | 0d |  |  |
| 23 | 4 | **Analysis and Design** | 5d | 1999-05-07 | 1999-05-11 |  | 0d |  |  |
| 24 | 4.1 | Perform Architectural Synthesis | 5d | 1999-05-07 | 1999-05-11 | 5 | 0d |  |  |

| ID | WBS | Task | Duration | Start | Finish | Predecessors | Total slack |
| --- | --- | --- | --- | --- | --- | --- | --- |
| 25 | 5 | **Test** | 1d | 1999-05-05 | 1999-05-05 |  | 7d |
| 26 | 5.1 | Plan Test | 1d | 1999-05-05 | 1999-05-05 | 4SS | 7d |
| 27 | 6 | **Environment** | 9d | 1999-05-04 | 1999-05-12 |  | 0d |
| 28 | 6.1 | Prepare Environment for Project | 1d | 1999-05-04 | 1999-05-04 | 2 | 1d |
| 29 | 6.2 | Prepare Environment for an Iteration | 1d | 1999-05-06 | 1999-05-06 | 28, 5SS | 0d |
| 30 | 6.3 | Prepare Guidelines for an Iteration | 1d | 1999-05-06 | 1999-05-06 | 28, 5SS | 6d |
| 31 | 6.4 | Support Environment During an Iteration | 6d | 1999-05-07 | 1999-05-12 | 29, 8FF | 0d |
| 32 | 7 | **Configuration & Change Management** | 9d | 1999-05-04 | 1999-05-12 |  | 0d |
| 33 | 7.1 | Plan Project Configuration and Change Control | 1d | 1999-05-04 | 1999-05-04 | 2 | 1d |
| 34 | 7.2 | Create Project CM Environments | 1d | 1999-05-06 | 1999-05-06 | 33, 5SS | 0d |
| 35 | 7.3 | Change and Deliver Configuration Items | 6d | 1999-05-07 | 1999-05-12 | 34, 8FF | 0d |
| 36 | 7.4 | Manage Baselines and Releases | 6d | 1999-05-07 | 1999-05-12 | 34, 6FF | 0d |
| 37 | 7.5 | Manage Change Requests | 6d | 1999-05-07 | 1999-05-12 | 34, 6FF | 0d |
| 38 | 7.6 | Monitor and Report Configuration Status | 6d | 1999-05-07 | 1999-05-12 | 34, 6FF | 0d |
